# BMA软件

Schedule from MS Project, 2010-01-28 to 2010-03-02.
pansino

## Calendars

- 标准: Mon-Fri 08:00-12:00, 13:00-17:00; Sat-Sun off. Exceptions (off unless hours are given): 2010-02-14 to 2010-02-20 (春节).

## Schedule

| ID | WBS | Task | Duration | Start | Finish | Predecessors | Total slack |
| --- | --- | --- | --- | --- | --- | --- | --- |
| 1 | 1 | **F4控制器** | 19d? | 2010-01-28 | 2010-03-02 |  | 0d |
| 2 | 1.1 | **F4程序功能补充** | 19d? | 2010-01-28 | 2010-03-02 |  | 0d |
| 3 | 1.1.1 | 技术调研 | 1d? | 2010-01-28 | 2010-01-28 |  | 0d |
| 4 | 1.1.2 | **编写读取每个参数寄存器VI** | 6d? | 2010-01-29 | 2010-02-05 | 3 | 0d |
| 5 | 1.1.2.1 | PID 60个参数 | 3d | 2010-01-29 | 2010-02-02 |  | 0d |
| 6 | 1.1.2.2 | Crtl Output 26个参数 | 1d? | 2010-02-03 | 2010-02-03 | 5 | 0d |
| 7 | 1.1.2.3 | DO Output 48个参数 | 1.5d | 2010-02-04 | 2010-02-05 | 6 | 0d |
| 8 | 1.1.2.4 | Main Page 9个参数 | 0.5d? | 2010-02-05 | 2010-02-05 | 7 | 0d |
| 9 | 1.1.3 | **解析寄存器变量意义** | 5d? | 2010-02-08 | 2010-02-12 | 4 | 0d |
| 10 | 1.1.3.1 | PID 参数 6种参数 | 1d? | 2010-02-08 | 2010-02-08 |  | 0d |
| 11 | 1.1.3.2 | Crtl Output 26种参数 | 2d? | 2010-02-09 | 2010-02-10 | 10 | 0d |
| 12 | 1.1.3.3 | DO Output 6种参数 | 1d? | 2010-02-11 | 2010-02-11 | 11 | 0d |
| 13 | 1.1.3.4 | Main Page 3种参数 | 1d? | 2010-02-12 | 2010-02-12 | 12 | 0d |
| 14 | 1.1.4 | 测试VI是否能够正确读取参数 | 1d? | 2010-02-22 | 2010-02-22 | 9 | 0d |
| 15 | 1.1.5 | **修改界面刷新机制** | 4d? | 2010-02-23 | 2010-02-26 | 14 | 0d |
| 16 | 1.1.5.1 | PID 参数 | 1d? | 2010-02-23 | 2010-02-23 |  | 0d |
| 17 | 1.1.5.2 | Crtl Output | 1d? | 2010-02-24 | 2010-02-24 | 16 | 0d |
| 18 | 1.1.5.3 | DO Output | 1d? | 2010-02-25 | 2010-02-25 | 17 | 0d |
| 19 | 1.1.5.4 | Main Page | 1d? | 2010-02-26 | 2010-02-26 | 18 | 0d |
| 20 | 1.1.6 | 测试软件 | 2d? | 2010-03-01 | 2010-03-02 | 15 | 0d |
