# BMA软件

Schedule from MS Project, 2010-01-28 to 2010-03-01.
pansino

## Calendars

- 标准: Mon-Fri 08:00-12:00, 13:00-17:00; Sat-Sun off. Exceptions (off unless hours are given): 2010-02-14 to 2010-02-20 (春节).

## Schedule

| ID | WBS | Task | Type | Duration | Start | Finish | Predecessors | Total slack |
| --- | --- | --- | --- | --- | --- | --- | --- | --- |
| 1 | 1 | **F4控制器** |  | 18d? | 2010-01-28 | 2010-03-01 |  | 0d |
| 2 | 1.1 | **F4程序功能补充** |  | 18d? | 2010-01-28 | 2010-03-01 |  | 0d |
| 3 | 1.1.1 | 技术调研 |  | 1d? | 2010-01-28 | 2010-01-28 |  | 0d |
| 4 | 1.1.2 | **PID 60个参数** |  | 5d? | 2010-01-29 | 2010-02-04 | 3 | 0d |
| 5 | 1.1.2.1 | 编写读取每个参数寄存器VI 60个参数 |  | 3d | 2010-01-29 | 2010-02-02 |  | 0d |
| 6 | 1.1.2.2 | 测试通讯是否报错 | milestone | 0d | 2010-02-02 | 2010-02-02 | 5 | 0d |
| 7 | 1.1.2.3 | 解析寄存器变量意义 6种 |  | 1d? | 2010-02-03 | 2010-02-03 | 6 | 0d |
| 8 | 1.1.2.4 | 测试读取参数属否和F4软件相同 | milestone | 0d | 2010-02-03 | 2010-02-03 | 7 | 0d |
| 9 | 1.1.2.5 | 修改F4界面刷新机制 |  | 1d? | 2010-02-04 | 2010-02-04 | 8 | 0d |
| 10 | 1.1.2.6 | 测试软件是否正常工作 | milestone | 0d | 2010-02-04 | 2010-02-04 | 9 | 0d |
| 11 | 1.1.3 | **Crtl Output 26个参数** |  | 5d? | 2010-02-05 | 2010-02-11 | 4 | 0d |
| 12 | 1.1.3.1 | 编写读取每个参数寄存器VI 26个参数 |  | 2d | 2010-02-05 | 2010-02-08 |  | 0d |
| 13 | 1.1.3.2 | 测试通讯是否报错 | milestone | 0d | 2010-02-08 | 2010-02-08 | 12 | 0d |
| 14 | 1.1.3.3 | 解析寄存器变量意义 26个参数 |  | 2d | 2010-02-09 | 2010-02-10 | 13 | 0d |
| 15 | 1.1.3.4 | 测试读取参数属否和F4软件相同 | milestone | 0d | 2010-02-10 | 2010-02-10 | 14 | 0d |
| 16 | 1.1.3.5 | 修改界面刷新机制 |  | 1d? | 2010-02-11 | 2010-02-11 | 15 | 0d |
| 17 | 1.1.3.6 | 测试软件是否正常工作 | milestone | 0d | 2010-02-11 | 2010-02-11 | 16 | 0d |
| 18 | 1.1.4 | **DO Output 48个参数** |  | 4d? | 2010-02-12 | 2010-02-24 | 11 | 0d |
| 19 | 1.1.4.1 | 编写读取每个参数寄存器VI |  | 2d? | 2010-02-12 | 2010-02-22 |  | 0d |
| 20 | 1.1.4.2 | 测试通讯是否报错 | milestone | 0d | 2010-02-22 | 2010-02-22 | 19 | 0d |
| 21 | 1.1.4.3 | 解析寄存器变量意义 6种 |  | 1d? | 2010-02-23 | 2010-02-23 | 20 | 0d |
| 22 | 1.1.4.4 | 测试读取参数属否和F4软件相同 | milestone | 0d | 2010-02-23 | 2010-02-23 | 21 | 0d |
| 23 | 1.1.4.5 | 修改界面刷新机制 |  | 1d? | 2010-02-24 | 2010-02-24 | 22 | 0d |
| 24 | 1.1.4.6 | 测试软件是否正常工作 | milestone | 0d | 2010-02-24 | 2010-02-24 | 23 | 0d |

| ID | WBS | Task | Type | Duration | Start | Finish | Predecessors | Total slack |
| --- | --- | --- | --- | --- | --- | --- | --- | --- |
| 25 | 1.1.5 | **Main Page 9个参数** |  | 3d? | 2010-02-25 | 2010-03-01 | 18 | 0d |
| 26 | 1.1.5.1 | 编写读取每个参数寄存器VI |  | 1d? | 2010-02-25 | 2010-02-25 |  | 0d |
| 27 | 1.1.5.2 | 测试通讯是否报错 | milestone | 0d | 2010-02-25 | 2010-02-25 | 26 | 0d |
| 28 | 1.1.5.3 | 解析寄存器变量意义 3种 |  | 1d? | 2010-02-26 | 2010-02-26 | 27 | 0d |
| 29 | 1.1.5.4 | 测试读取参数属否和F4软件相同 | milestone | 0d | 2010-02-26 | 2010-02-26 | 28 | 0d |
| 30 | 1.1.5.5 | 修改界面刷新机制 |  | 1d? | 2010-03-01 | 2010-03-01 | 29 | 0d |
| 31 | 1.1.5.6 | 测试软件是否正常工作 | milestone | 0d | 2010-03-01 | 2010-03-01 | 30 | 0d |
