# 兰州真空开发计划

Schedule from MS Project, 2010-08-18 to 2010-08-23.

## Calendars

- Standard: Mon-Fri 08:00-12:00, 13:00-17:00; Sat-Sun off.

## Resources

| Resource |
| --- |
| 李浩博 |
| 胡东旭 |

## Schedule

| ID | WBS | Task | Type | Duration | Start | Finish | Predecessors | Total slack | Free slack | Constraint | Resources | Work |
| --- | --- | --- | --- | --- | --- | --- | --- | --- | --- | --- | --- | --- |
| 1 | 1 | **兰州真空串口仪表开发** |  | 4d? | 2010-08-18 | 2010-08-23 |  |  |  |  |  | 60h |
| 2 | 1.1 | **CenterOne** |  | 0.5d | 2010-08-18 | 2010-08-18 |  | 1.5d |  |  |  | 4h |
| 3 | 1.1.1 | 驱动开发 |  | 0.5d | 2010-08-18 | 2010-08-18 |  | 1.5d | 0d |  | 李浩博 | 4h |
| 4 | 1.1.2 | 生成安装包 | milestone | 0d | 2010-08-18 | 2010-08-18 | 3 | 1.5d | 0.5d |  | 李浩博 |  |
| 5 | 1.2 | **CM51** |  | 0.5d | 2010-08-18 | 2010-08-18 |  | 1d |  |  |  | 4h |
| 6 | 1.2.1 | 驱动开发 |  | 0.5d | 2010-08-18 | 2010-08-18 |  | 1d | 0d | start no earlier than 2010-08-18 | 李浩博 | 4h |
| 7 | 1.2.2 | 生成安装包 | milestone | 0d | 2010-08-18 | 2010-08-18 | 6 | 1d |  |  | 李浩博 |  |
| 8 | 1.3 | **DPR250** |  | 0.5d | 2010-08-18 | 2010-08-18 |  | 1.5d |  |  |  | 4h |
| 9 | 1.3.1 | 驱动开发 |  | 0.5d | 2010-08-18 | 2010-08-18 |  | 1.5d | 0d |  | 胡东旭 | 4h |
| 10 | 1.3.2 | 生成安装包 | milestone | 0d | 2010-08-18 | 2010-08-18 | 9 | 1.5d | 0.5d |  | 胡东旭 |  |
| 11 | 1.4 | **DCP551** |  | 1d? | 2010-08-19 | 2010-08-19 |  | 0d |  |  |  | 16h |
| 12 | 1.4.1 | 读写寄存器 |  | 1d | 2010-08-19 | 2010-08-19 |  | 0d |  | start no earlier than 2010-08-19 | 胡东旭 | 8h |
| 13 | 1.4.2 | 读写文件 |  | 1d? | 2010-08-19 | 2010-08-19 |  | 0d |  | start no earlier than 2010-08-19 | 李浩博 | 8h |
| 14 | 1.4.3 | 生成安装包 | milestone | 0d | 2010-08-19 | 2010-08-19 | 12, 13 | 0d |  |  | 李浩博; 胡东旭 |  |
| 15 | 1.5 | 通讯测试 |  | 1d | 2010-08-20 | 2010-08-20 | 4, 7, 10, 14 | 0d |  |  | 李浩博; 胡东旭 | 16h |
| 16 | 1.6 | 现场调试 |  | 1d | 2010-08-23 | 2010-08-23 | 15 | 0d |  |  | 李浩博; 胡东旭 | 16h |
| 17 | 1.7 | 交付 | milestone | 0d | 2010-08-23 | 2010-08-23 | 16 | 0d |  |  | 李浩博; 胡东旭 |  |
